# PMS Software Development Plan Final

Schedule from MS Project, 2015-10-05 to 2016-10-17.

## Calendars

- Standard: Mon-Thu 08:00-12:00, 13:00-17:00; Fri-Sat off; Sun 08:00-12:00, 13:00-17:00. Exceptions (off unless hours are given): 2015-10-17 08:00-12:00, 13:00-17:00, 2015-10-22 (Holiday), 2015-10-31 08:00-12:00, 13:00-17:00.

## Resources

| Resource |
| --- |
| Management |
| Project Manager |
| Developer 1 |
| Developer 2 |

## Schedule

| ID | WBS | Task | Type | Duration | Start | Finish | Predecessors | Total slack | Free slack | Constraint | Resources | Work |
| --- | --- | --- | --- | --- | --- | --- | --- | --- | --- | --- | --- | --- |
| 1 | 1 | **Requirement Analysis and Design** |  | 6d | 2015-10-17 | 2015-10-25 |  |  |  |  | Management; Project Manager | 144h |
| 2 | 1.1 | Determine project scope |  | 5d | 2015-10-17 | 2015-10-21 |  | 250d | 0d | start no earlier than 2015-10-17 | Management | 40h |
| 3 | 1.2 | Define preliminary resources |  | 1d | 2015-10-25 | 2015-10-25 | 2 | 250d | 0d | finish no earlier than 2015-10-19 | Project Manager | 8h |
| 4 | 2 | **Database design** |  | 7d | 2015-10-26 | 2015-11-02 |  |  |  |  | Developer 1; Project Manager | 168h |
| 5 | 2.1 | Database design |  | 7d | 2015-10-26 | 2015-11-02 | 3 | 250d |  | start no earlier than 2015-10-20 | Project Manager | 56h |
| 6 | 3 | **UI Design** |  | 6d | 2015-11-03 | 2015-11-10 |  |  |  |  | Developer 1; Project Manager | 96h |
| 7 | 3.1 | Design complete |  | 6d | 2015-11-02 | 2015-11-09 |  | 245d |  | start no earlier than 2015-11-02 |  |  |
| 8 | 4 | **Development / Coding** |  | 244d | 2015-11-11 | 2016-10-17 |  |  |  |  | Developer 1; Developer 2; Management; Project Manager | 7808h |
| 9 | 4.1 | **Business Set up** |  | 27d | 2015-11-11 | 2015-12-17 |  |  |  |  |  |  |
| 10 | 4.1.1 | Design Layout |  | 5d | 2015-11-11 | 2015-11-17 |  | 239d |  | start no earlier than 2015-11-11 |  |  |
| 11 | 4.1.2 | Database Design |  | 6d | 2015-11-17 | 2015-11-24 |  | 234d |  | start no earlier than 2015-11-17 |  |  |
| 12 | 4.1.3 | Company Set Up |  | 2d | 2015-11-25 | 2015-11-26 |  | 232d |  | start no earlier than 2015-11-25 |  |  |
| 13 | 4.1.4 | Branch Set Up |  | 1d | 2015-11-29 | 2015-11-29 |  | 231d |  | start no earlier than 2015-11-28 |  |  |
| 14 | 4.1.5 | Bank account |  | 1d | 2015-11-30 | 2015-11-30 |  | 230d |  | start no earlier than 2015-11-30 |  |  |
| 15 | 4.1.6 | Bank Branch Set Up |  | 2d | 2015-12-01 | 2015-12-02 |  | 228d |  | start no earlier than 2015-12-01 |  |  |
| 16 | 4.1.7 | Broker House Set up |  | 2d | 2015-11-03 | 2015-11-04 |  | 248d |  | start no earlier than 2015-11-03 |  |  |
| 17 | 4.1.8 | Agent Set up |  | 2d | 2015-11-05 | 2015-11-08 |  | 246d |  | start no earlier than 2015-11-05 |  |  |
| 18 | 4.1.9 | Product Set up |  | 3d | 2015-12-09 | 2015-12-13 |  | 221d |  | start no earlier than 2015-12-09 |  |  |
| 19 | 4.1.10 | Product wise Charge Set up |  | 3d | 2015-12-14 | 2015-12-16 |  | 218d |  | start no earlier than 2015-12-14 |  |  |
| 20 | 4.1.11 | Instrument Set up |  | 2d | 2015-12-20 | 2015-12-21 |  | 215d |  | start no earlier than 2015-12-20 |  |  |
| 21 | 4.1.12 | Instrument Listing |  | 2d | 2015-12-22 | 2015-12-23 |  | 213d |  | start no earlier than 2015-12-22 |  |  |
| 22 | 4.1.13 | Instrument View |  | 2d | 2015-12-24 | 2015-12-27 |  | 211d |  | start no earlier than 2015-12-24 |  |  |
| 23 | 4.1.14 | Email Setting Setup |  | 2d | 2015-12-29 | 2015-12-30 |  | 208d |  | start no earlier than 2015-12-29 |  |  |
| 24 | 4.2 | **Investor Set Up** |  | 41d | 2015-12-20 | 2016-02-14 |  |  |  |  |  |  |
| 25 | 4.2.1 | Requirement Analysis |  | 4d | 2015-12-20 | 2015-12-23 |  | 37d |  |  |  |  |
| 26 | 4.2.2 | Design Layout |  | 4d | 2016-02-14 | 2016-02-17 | 36 | -33d | 0d |  |  |  |
| 27 | 4.2.3 | Database Design |  | 5d | 2016-02-18 | 2016-02-24 | 26 | -33d | 0d | finish no earlier than 2016-01-05 |  |  |
| 28 | 4.2.4 | Investor Set up form |  | 15d | 2016-02-25 | 2016-03-16 | 27 | -33d | 0d |  |  |  |
| 29 | 4.2.5 | Investor View |  | 2d | 2016-03-17 | 2016-03-20 | 28 | -33d | 0d |  |  |  |
| 30 | 4.2.6 | Record keeping |  | 2d | 2016-03-21 | 2016-03-22 | 29 | -33d | 0d |  |  |  |
| 31 | 4.2.7 | Account and other information- | milestone | 0d | 2015-12-20 | 2015-12-20 |  | 41d |  |  |  |  |
| 32 | 4.2.8 | 1. List of all account holder |  | 1d | 2016-03-23 | 2016-03-23 | 30 | -33d | 0d |  |  |  |
| 33 | 4.2.9 | 2. Client contact information |  | 1d | 2016-03-24 | 2016-03-24 | 32 | -33d | 0d |  |  |  |
| 34 | 4.2.10 | 3. Account closing information |  | 2d | 2016-03-27 | 2016-03-28 | 33 | -33d | 0d |  |  |  |
| 35 | 4.2.11 | 5. Investor account opening information |  | 2d | 2016-03-29 | 2016-03-30 | 34 | -33d | 0d |  |  |  |
| 36 | 4.2.12 | 6. Investor signature card information | manual | 2d | 2016-02-10 | 2016-02-11 |  |  |  | start no earlier than 2016-02-10 |  |  |

| ID | WBS | Task | Duration | Start | Finish | Total slack | Constraint |
| --- | --- | --- | --- | --- | --- | --- | --- |
| 37 | 4.3 | **Accounting** | 37d | 2016-02-14 | 2016-04-04 |  |  |
| 38 | 4.3.1 | Requirement Analysis | 3d | 2016-02-14 | 2016-02-16 | 34d |  |
| 39 | 4.3.2 | Design Layout | 5d | 2015-11-08 | 2015-11-12 | 242d | finish no earlier than 2015-11-12 |
| 40 | 4.3.3 | Database Design | 5d | 2015-11-15 | 2015-11-19 | 237d | finish no earlier than 2015-11-19 |
| 41 | 4.3.4 | Create COA | 4d | 2015-11-18 | 2015-11-23 | 235d | finish no earlier than 2015-11-23 |
| 42 | 4.3.5 | Payment Browser | 2d | 2015-11-23 | 2015-11-24 | 234d | finish no earlier than 2015-11-24 |
| 43 | 4.3.6 | Broker Receive Payment | 2d | 2016-02-14 | 2016-02-15 | 35d |  |
| 44 | 4.3.7 | Requisition Approval | 2d | 2016-02-14 | 2016-02-15 | 35d |  |
| 45 | 4.3.8 | Send to Bank | 2d | 2015-11-08 | 2015-11-09 | 245d | start no earlier than 2015-11-08 |
| 46 | 4.3.9 | Cash Payment | 2d | 2016-02-14 | 2016-02-15 | 35d |  |
| 47 | 4.3.10 | Cheque Payment | 2d | 2016-02-14 | 2016-02-15 | 35d |  |
| 48 | 4.3.11 | Cheque Approval | 2d | 2016-02-14 | 2016-02-15 | 35d |  |
| 49 | 4.3.12 | Dishonored Cheque | 2d | 2016-02-14 | 2016-02-15 | 35d |  |
| 50 | 4.3.13 | Accounting Transaction | 2d | 2015-10-07 | 2015-10-08 | 268d | start no earlier than 2015-10-07 |
| 51 | 4.3.14 | Banking | 2d | 2016-02-14 | 2016-02-15 | 35d |  |
| 52 | 4.4 | **Receive & Payment** | 15d | 2016-04-05 | 2016-04-25 |  |  |
| 53 | 4.4.1 | Requirement Analysis | 2d | 2016-04-05 | 2016-04-06 | 13d |  |
| 54 | 4.4.2 | Design Layout | 2d | 2015-11-11 | 2015-11-12 | 242d | finish no earlier than 2015-11-12 |
| 55 | 4.4.3 | Database Design | 3d | 2015-11-17 | 2015-11-19 | 237d | finish no earlier than 2015-11-19 |
| 56 | 4.4.4 | Fund Transfer Order | 2d | 2015-11-22 | 2015-11-23 | 235d | finish no earlier than 2015-11-23 |
| 57 | 4.4.5 | Cash receive(form) | 2d | 2015-11-23 | 2015-11-24 | 234d | finish no earlier than 2015-11-24 |
| 58 | 4.4.6 | Cheque receive (form) | 2d | 2016-04-05 | 2016-04-06 | 13d |  |
| 59 | 4.4.7 | Fund Withdrawal Form | 2d | 2016-04-05 | 2016-04-06 | 13d |  |
| 60 | 4.5 | **Trade** | 42d | 2016-03-21 | 2016-05-17 |  |  |
| 61 | 4.5.1 | Requirement Analysis | 3d | 2016-03-21 | 2016-03-23 | 39d |  |
| 62 | 4.5.2 | Design Layout | 5d | 2015-11-08 | 2015-11-12 | 242d | finish no earlier than 2015-11-12 |
| 63 | 4.5.3 | Database Design | 6d | 2015-11-12 | 2015-11-19 | 237d | finish no earlier than 2015-11-19 |
| 64 | 4.5.4 | Upload Order | 2d | 2016-03-21 | 2016-03-22 | 40d |  |
| 65 | 4.5.5 | Trade Order | 2d | 2016-03-21 | 2016-03-22 | 40d |  |
| 66 | 4.5.6 | Reconciliation Report | 3d | 2016-03-21 | 2016-03-23 | 39d |  |
| 67 | 4.5.7 | Cash Limit file | 3d | 2015-11-19 | 2015-11-23 | 235d | finish no earlier than 2015-11-23 |
| 68 | 4.5.8 | Share limit file | 3d | 2015-11-22 | 2015-11-24 | 234d | finish no earlier than 2015-11-24 |
| 69 | 4.5.9 | Price import | 2d | 2016-03-21 | 2016-03-22 | 40d |  |
| 70 | 4.5.10 | Trade Import | 4d | 2016-03-21 | 2016-03-24 | 38d |  |
| 71 | 4.5.11 | Price Browser | 2d | 2015-11-08 | 2015-11-09 | 245d | start no earlier than 2015-11-08 |
| 72 | 4.5.12 | Trade Browser | 2d | 2016-03-21 | 2016-03-22 | 40d |  |
| 73 | 4.5.13 | Edit (Trade & Price) | 2d | 2016-03-21 | 2016-03-22 | 40d |  |
| 74 | 4.5.14 | Stock Entry | 3d | 2016-03-21 | 2016-03-23 | 39d |  |
| 75 | 4.5.15 | Stock Transfer | 2d | 2016-03-21 | 2016-03-22 | 40d |  |

| ID | WBS | Task | Type | Duration | Start | Finish | Total slack | Constraint |
| --- | --- | --- | --- | --- | --- | --- | --- | --- |
| 76 | 4.6 | **Corporate Action** |  | 10d | 2016-05-18 | 2016-05-31 |  |  |
| 77 | 4.6.1 | Requirement Analysis |  | 1d | 2016-05-18 | 2016-05-18 | 9d |  |
| 78 | 4.6.2 | Design Layout |  | 2d | 2015-11-11 | 2015-11-12 | 242d | finish no earlier than 2015-11-12 |
| 79 | 4.6.3 | Database Design |  | 2d | 2015-11-18 | 2015-11-19 | 237d | finish no earlier than 2015-11-19 |
| 80 | 4.6.4 | BO Setup (DP) |  | 2d | 2015-11-22 | 2015-11-23 | 235d | finish no earlier than 2015-11-23 |
| 81 | 4.6.5 | BO Account Links Setup (DP) |  | 2d | 2015-11-23 | 2015-11-24 | 234d | finish no earlier than 2015-11-24 |
| 82 | 4.6.6 | Dividend Declaration |  | 2d | 2016-05-18 | 2016-05-19 | 8d |  |
| 83 | 4.6.7 | Dividend Collection |  | 1d | 2016-05-18 | 2016-05-18 | 9d |  |
| 84 | 4.6.8 | Demat Confirmed Today (DP) |  | 2d | 2016-05-18 | 2016-05-19 | 8d |  |
| 85 | 4.6.9 | REMAT Request Setup Today(DP) |  | 2d | 2016-05-18 | 2016-05-19 | 8d |  |
| 86 | 4.6.10 | REMAT Request Confirmed/Rejected (DP) |  | 2d | 2016-05-18 | 2016-05-19 | 8d |  |
| 87 | 4.7 | **EOD Process** |  | 22d | 2016-06-01 | 2016-06-30 |  |  |
| 88 | 4.7.1 | Requirement Analysis |  | 2d | 2016-06-01 | 2016-06-02 | 20d |  |
| 89 | 4.7.2 | Design Layout |  | 1d | 2015-11-12 | 2015-11-12 | 242d | finish no earlier than 2015-11-12 |
| 90 | 4.7.3 | Database Design |  | 2d | 2015-11-18 | 2015-11-19 | 237d | finish no earlier than 2015-11-19 |
| 91 | 4.7.4 | EOD Process |  | 20d | 2015-10-28 | 2015-11-23 | 235d | finish no earlier than 2015-11-23 |
| 92 | 4.8 | **Corporate Action 2** |  | 20d | 2016-05-18 | 2016-06-14 |  |  |
| 93 | 4.8.1 | Requirement Analysis |  | 3d | 2016-05-18 | 2016-05-22 | 17d |  |
| 94 | 4.8.2 | Design Layout |  | 5d | 2015-11-08 | 2015-11-12 | 242d | finish no earlier than 2015-11-12 |
| 95 | 4.8.3 | Database Design |  | 7d | 2015-11-11 | 2015-11-19 | 237d | finish no earlier than 2015-11-19 |
| 96 | 4.8.4 | IPO / Placement IPO/ RPO Declaration |  | 2d | 2016-05-18 | 2016-05-19 | 18d |  |
| 97 | 4.8.5 | IPO / Placement IPO/ RPO Order |  | 3d | 2016-05-18 | 2016-05-22 | 17d |  |
| 98 | 4.8.6 | IPO / Placement IPO/ RPO Order Cancel |  | 2d | 2016-05-18 | 2016-05-19 | 18d |  |
| 99 | 4.8.7 | IPO / Placement IPO/ RPO Claim |  | 1d | 2016-05-18 | 2016-05-18 | 19d |  |
| 100 | 4.8.8 | IPO / Placement IPO/ RPO Collection |  | 2d | 2016-05-18 | 2016-05-19 | 18d |  |
| 101 | 4.8.9 | IPO / Placement IPO/ RPO Refund |  | 3d | 2016-05-18 | 2016-05-22 | 17d |  |
| 102 | 4.8.10 | Cash Calculations Report (DP) |  | 2d | 2016-05-18 | 2016-05-19 | 18d |  |
| 103 | 4.8.11 | Non Cash CA Calculations Report (DP) |  | 1d | 2016-05-18 | 2016-05-18 | 19d |  |
| 104 | 4.8.12 | Corporate Action Processing Report (DP) |  | 2d | 2016-05-18 | 2016-05-19 | 18d |  |
| 105 | 4.8.13 | Transmission of Securities (Transferee DP) |  | 3d | 2016-05-18 | 2016-05-22 | 17d |  |
| 106 | 4.8.14 | Transmission of Securities (Transferor DP) |  | 2d | 2016-05-18 | 2016-05-19 | 18d |  |
| 107 | 4.8.15 | Transmission of Securities (Change of Ownership) |  | 1d | 2016-05-18 | 2016-05-18 | 19d |  |
| 108 | 4.8.16 | DRF Aging Report (DP) |  | 2d | 2016-05-18 | 2016-05-19 | 18d |  |
| 109 | 4.8.17 | IPO Processing Report (DP) |  | 3d | 2016-05-18 | 2016-05-22 | 17d |  |
| 110 | 4.8.18 | Lock in Share |  | 2d | 2016-05-18 | 2016-05-19 | 18d |  |
| 111 | 4.8.19 | Lock in Share |  | 1d | 2016-05-18 | 2016-05-18 | 19d |  |
| 112 | 4.8.20 | REMAT Request Setup Today(DP) |  | 3d | 2016-05-18 | 2016-05-22 | 17d |  |
| 113 | 4.8.21 | REMAT Request Confirmed/Rejected (DP) |  | 2d | 2016-05-18 | 2016-05-19 | 18d |  |
| 114 | 4.8.22 | RRF Aging Report (DP) |  | 1d | 2016-05-18 | 2016-05-18 | 19d |  |
| 115 | 4.8.23 | Freeze Setup Today |  | 2d | 2016-05-18 | 2016-05-19 | 18d |  |
| 116 | 4.8.24 | BO Sunpension Setup Today |  | 3d | 2016-05-18 | 2016-05-22 | 17d |  |
| 117 | 4.8.25 | Freeze Released Today |  | 3d | 2016-05-18 | 2016-05-22 | 17d |  |
| 118 | 4.8.26 | Pledge Setup/Cancelled/Accepted/Rejected Today |  | 2d | 2016-05-18 | 2016-05-19 | 18d |  |
| 119 | 4.8.27 | UnPledge Setup/Cancelled/Accepted/Rejected Today |  | 1d | 2016-05-18 | 2016-05-18 | 19d |  |
| 120 | 4.8.28 | Pledge Holding Report |  | 2d | 2016-05-18 | 2016-05-19 | 18d |  |
| 121 | 4.8.29 | Daily Charge Report |  | 3d | 2016-05-18 | 2016-05-22 | 17d |  |
| 122 | 4.8.30 | Daily Transactions Report |  | 2d | 2016-05-18 | 2016-05-19 | 18d |  |
| 123 | 4.8.31 | Invoice For The Bill Period (DP) |  | 2d | 2015-10-05 | 2015-10-06 | 270d | start no earlier than 2015-10-05 |
| 124 | 4.8.32 | 7. Investor account opening letter |  | 2d | 2016-05-18 | 2016-05-19 | 18d |  |
| 125 | 4.8.33 | Letter to Investor |  | 2d | 2016-05-18 | 2016-05-19 | 18d |  |
| 126 | 4.8.34 | 1. fund transfer & liquidation letter send through e-mail |  | 1d | 2016-05-18 | 2016-05-18 | 19d |  |
| 127 | 4.8.35 | 2. Information on client login in our web | milestone | 0d | 2016-05-18 | 2016-05-18 | 20d |  |
| 128 | 4.8.36 | 3. Promotional Activities letter with attachment |  | 1d | 2016-05-18 | 2016-05-18 | 19d |  |
| 129 | 4.8.37 | 4. Greetings Letter |  | 2d | 2016-05-18 | 2016-05-19 | 18d |  |
| 130 | 4.8.38 | 5. Forwarding letter(daily, weekly, half yearly, yearly report) |  | 4d | 2016-05-18 | 2016-05-23 | 16d |  |
| 131 | 4.8.39 | 6. Request for open sub-account-for Brokers |  | 3d | 2016-05-18 | 2016-05-22 | 17d |  |

| ID | WBS | Task | Duration | Start | Finish | Predecessors | Total slack | Free slack | Constraint | Resources | Work |
| --- | --- | --- | --- | --- | --- | --- | --- | --- | --- | --- | --- |
| 132 | 4.9 | **Dashboard** | 5d | 2016-08-17 | 2016-08-23 |  |  |  |  |  |  |
| 133 | 4.9.1 | Requirement Analysis | 1d | 2016-08-17 | 2016-08-17 |  | 4d |  |  |  |  |
| 134 | 4.9.2 | Design Layout | 1d | 2015-11-12 | 2015-11-12 |  | 242d |  | finish no earlier than 2015-11-12 |  |  |
| 135 | 4.9.3 | Dashboard | 3d | 2015-11-19 | 2015-11-23 |  | 235d |  | finish no earlier than 2015-11-23 |  |  |
| 136 | 5 | **Implementation** | 2d | 2016-08-24 | 2016-08-25 |  |  |  |  |  | 40h |
| 137 | 5.1 | Distribute to team members | 4d | 2016-08-24 | 2016-08-29 |  | -3d | 0d |  | Project Manager | 32h |
| 138 | 5.2 | Create software maintenance team | 1d | 2016-08-30 | 2016-08-30 | 137 | -3d | 0d |  | Project Manager | 8h |
